# Upper Tamor Hydropower Project (285 MW)

Schedule from Primavera P6, 2025-01-01 to 2028-09-15, data date 2025-01-01, costs in NRS.
Must finish by 2028-07-02

## Calendars

- 7-Day Workweek: Mon-Sun 08:00-16:00.

## Resources

| Resource | Group | Unit | Rate |
| --- | --- | --- | --- |
| Concrete | material | m3 | 15000 |

## Schedule

| ID | WBS | Activity | Duration | Start | Finish | Predecessors | Total float | Free float | Constraint |
| --- | --- | --- | --- | --- | --- | --- | --- | --- | --- |
|  | I | **General/Contractual** |  | 2025-01-01 | 2025-01-14 |  |  |  |  |
| GN-1010 |  | Letter of Acceptance | 1d | 2025-01-01 | 2025-01-01 |  | 1278d | 1353d |  |
| GN-1020 |  | Submission of Performance Bank Gurantee | 14d | 2025-01-01 | 2025-01-14 |  | 1265d | 1340d |  |
| GN-1030 |  | Signing of Contract Agreement | 7d | 2025-01-01 | 2025-01-07 |  | 1272d | 0d |  |
| GN-1040 |  | Access/Possession of site | 1d | 2025-01-01 | 2025-01-01 |  | 1278d | 1353d |  |
| GN-1050 |  | Interim Arrangement of the Design consultant | 14d | 2025-01-01 | 2025-01-14 |  | 1265d | 1340d |  |
| GN-1060 |  | Release of Moblization Advance 1st Part | 10d | 2025-01-01 | 2025-01-10 |  | 1269d | 1344d |  |
| GN-1070 |  | Release of Moblization Advance 2nd Part | 10d | 2025-01-01 | 2025-01-10 |  | 1269d | 1344d |  |
| GN-1100 |  | Notice to Commence | 1d | 2025-01-01 | 2025-01-01 | GN-1030 SS | 1278d | 1353d |  |
|  | II | **Mobilization** |  | 2025-01-01 | 2028-09-15 |  |  |  |  |
|  | 1 | **Human Resources** |  | 2025-01-01 | 2028-09-15 |  |  |  |  |
|  | 1 | **Project Management Office** |  | 2025-01-01 | 2028-09-15 |  |  |  |  |
| MB-1002 |  | Project Coordinator | 1350d | 2025-01-01 | 2028-09-11 |  | -71d | 0d |  |
| MB-1000 |  | Project Manager | 1200d | 2025-06-01 | 2028-09-12 |  | -72d | 0d | start on or after 2025-06-01 |
| MB-1003 |  | Assistant PD Project Controler - 1 | 1200d | 2025-06-01 | 2028-09-12 | MB-1000 SS | -72d | 3d |  |
| MB-1001 |  | Deputy Project Manager | 1170d | 2025-07-01 | 2028-09-12 |  | -72d | 0d | start on or after 2025-07-01 |
|  | 1 | **TBM Department** |  | 2025-11-01 | 2028-09-15 |  |  |  |  |
| MB-1100 |  | TBM Tunnel Engineer | 1050d | 2025-11-01 | 2028-09-15 |  | -75d | 0d | start on or after 2025-11-01 |
| MB-1101 |  | QA/QC Engineer Casting Yard | 1050d | 2025-11-01 | 2028-09-15 | MB-1100 SS | -75d | 0d |  |
|  | 2 | **Civil Construction Department** |  | 2025-01-01 | 2028-09-12 |  |  |  |  |
| MB-1201 |  | Deputy Construction Manager-1 Powerhouse | 1350d | 2025-01-01 | 2028-09-11 |  | -71d | 0d |  |
| MB-1206 |  | Underground Engineer | 1350d | 2025-01-01 | 2028-09-11 | MB-1201 SS | -71d | 0d |  |
| MB-1207 |  | Drill & Blast Engineer - 1 | 1350d | 2025-01-01 | 2028-09-11 | MB-1206 SS | -71d | 0d |  |
| MB-1208 |  | Drill & Blast Engineer - 2 | 1350d | 2025-01-01 | 2028-09-11 | MB-1207 SS | -71d | 0d |  |
| MB-1209 |  | Tunnel Engineer - 1 | 1350d | 2025-01-01 | 2028-09-11 | MB-1208 SS | -71d | 4d |  |
| MB-1202 |  | Deputy Construction Manager-2 Dam | 1200d | 2025-06-01 | 2028-09-12 | MB-1000 SS | -72d | 3d |  |
| MB-1200 |  | Construction Manager | 1170d | 2025-07-01 | 2028-09-12 | MB-1001 SS | -72d | 0d |  |
| MB-1203 |  | Deputy Construction Manager-3 Surge Shaft & Other Component | 1170d | 2025-07-01 | 2028-09-12 | MB-1200 SS | -72d | 0d |  |
| MB-1204 |  | RCC Dam Engineer - 1 | 1170d | 2025-07-01 | 2028-09-12 | MB-1203 SS | -72d | 0d |  |
| MB-1205 |  | RCC Dam Engineer - 2 | 1170d | 2025-07-01 | 2028-09-12 | MB-1204 SS | -72d | 0d |  |
| MB-1210 |  | Tunnel Engineer - 2 | 1170d | 2025-07-01 | 2028-09-12 | MB-1205 SS | -72d | 0d |  |
| MB-1211 |  | Rebar Fabrication Yard Supervisor | 1170d | 2025-07-01 | 2028-09-12 | MB-1210 SS | -72d | 0d |  |
| MB-1212 |  | Foreman Rebar - 2 | 1170d | 2025-07-01 | 2028-09-12 | MB-1211 SS | -72d | 0d |  |
| MB-1213 |  | Foreman Formwork - 1 | 1170d | 2025-07-01 | 2028-09-12 | MB-1212 SS | -72d | 0d |  |
| MB-1214 |  | Foreman Formwork - 2 | 1170d | 2025-07-01 | 2028-09-12 | MB-1213 SS | -72d | 0d |  |
| MB-1215 |  | Foreman Concrete - 1 | 1170d | 2025-07-01 | 2028-09-12 | MB-1214 SS | -72d | 0d |  |
| MB-1216 |  | Foreman Concrete - 2 | 1170d | 2025-07-01 | 2028-09-12 | MB-1215 SS | -72d | 0d |  |
| MB-1217 |  | Excavation Foreman - 1 | 1170d | 2025-07-01 | 2028-09-12 | MB-1216 SS | -72d | 0d |  |
| MB-1218 |  | Excavation Foreman - 2 | 1170d | 2025-07-01 | 2028-09-12 | MB-1217 SS | -72d | 0d |  |
| MB-1219 |  | Rock Support Foreman - 1 | 1170d | 2025-07-01 | 2028-09-12 | MB-1218 SS | -72d | 0d |  |
| MB-1220 |  | Rock Support Foreman - 2 | 1170d | 2025-07-01 | 2028-09-12 | MB-1219 SS | -72d | 0d |  |
| MB-1221 |  | Drill & Blast Engineer - 3 | 1170d | 2025-07-01 | 2028-09-12 | MB-1220 SS | -72d | 0d |  |
| MB-1222 |  | Drill & Blast Engineer - 4 | 1170d | 2025-07-01 | 2028-09-12 | MB-1221 SS | -72d | 3d |  |

| ID | WBS | Activity | Duration | Start | Finish | Predecessors | Total float | Free float |
| --- | --- | --- | --- | --- | --- | --- | --- | --- |
|  | 3 | **Plant Department** |  | 2025-01-01 | 2028-09-12 |  |  |  |
| MB-1301 |  | Mechanical Engineer | 1350d | 2025-01-01 | 2028-09-11 | MB-1002 SS | -71d | 0d |
| MB-1304 |  | Sr. Mechanic - 2 | 1350d | 2025-01-01 | 2028-09-11 | MB-1301 SS | -71d | 4d |
| MB-1300 |  | Plant Manager | 1200d | 2025-06-01 | 2028-09-12 | MB-1000 SS | -72d | 3d |
| MB-1302 |  | Electrical Engineer | 1170d | 2025-07-01 | 2028-09-12 | MB-1001 SS | -72d | 0d |
| MB-1303 |  | Sr. Mechanic - 1 | 1170d | 2025-07-01 | 2028-09-12 | MB-1302 SS | -72d | 0d |
| MB-1305 |  | Electrical Foreman - 2 | 1170d | 2025-07-01 | 2028-09-12 | MB-1303 SS | -72d | 0d |
| MB-1306 |  | Electrical Foreman - 2 | 1170d | 2025-07-01 | 2028-09-12 | MB-1305 SS | -72d | 3d |
|  | 4 | **HSE Department** |  | 2025-01-01 | 2028-09-12 |  |  |  |
| MB-1402 |  | Safety Officer - 1 | 1350d | 2025-01-01 | 2028-09-11 |  | -71d | 4d |
| MB-1400 |  | HSE Manager | 1170d | 2025-07-01 | 2028-09-12 | MB-1001 SS | -72d | 0d |
| MB-1401 |  | Environmental Engineer | 1170d | 2025-07-01 | 2028-09-12 | MB-1400 SS | -72d | 0d |
| MB-1403 |  | Safety Officer - 2 | 1170d | 2025-07-01 | 2028-09-12 | MB-1401 SS | -72d | 3d |
|  | 5 | **Quality Assurance/Quality Control Department** |  | 2025-07-01 | 2028-09-12 |  |  |  |
| MB-1500 |  | QA/QC Manager | 1170d | 2025-07-01 | 2028-09-12 | MB-1001 SS | -72d | 0d |
| MB-1501 |  | QA/QC Engineer | 1170d | 2025-07-01 | 2028-09-12 | MB-1500 SS | -72d | 0d |
| MB-1502 |  | Material Engineer | 1170d | 2025-07-01 | 2028-09-12 | MB-1501 SS | -72d | 0d |
| MB-1503 |  | Lab-Technician - 1 | 1170d | 2025-07-01 | 2028-09-12 | MB-1502 SS | -72d | 0d |
| MB-1504 |  | Lab-Technician - 2 | 1170d | 2025-07-01 | 2028-09-12 | MB-1503 SS | -72d | 3d |
|  | 6 | **Procurement Department** |  | 2025-01-01 | 2028-09-12 |  |  |  |
| MB-1600 |  | Procurement Manager | 1350d | 2025-01-01 | 2028-09-11 | MB-1002 SS | -71d | 0d |
| MB-1601 |  | Procurement Officer | 1350d | 2025-01-01 | 2028-09-11 | MB-1600 SS | -71d | 0d |
| MB-1602 |  | Logistics | 1350d | 2025-01-01 | 2028-09-11 | MB-1601 SS | -71d | 0d |
| MB-1603 |  | Logistics | 1350d | 2025-01-01 | 2028-09-11 | MB-1602 SS | -71d | 4d |
| MB-1604 |  | Store Incharge | 1200d | 2025-06-01 | 2028-09-12 | MB-1000 SS | -72d | 3d |

| ID | WBS | Activity | Duration | Start | Finish | Predecessors | Total float | Free float | Constraint |
| --- | --- | --- | --- | --- | --- | --- | --- | --- | --- |
|  | 7 | **Technical Department** |  | 2025-01-01 | 2028-09-12 |  |  |  |  |
| MB-1702 |  | Geologist Engineer | 1350d | 2025-01-01 | 2028-09-11 | MB-1002 SS | -71d | 4d |  |
| MB-1700 |  | Chief Technical Engineer | 1215d | 2025-05-01 | 2028-08-27 |  | -56d | 0d | start on or after 2025-05-01 |
| MB-1701 |  | Technical Engineer | 1215d | 2025-05-01 | 2028-08-27 | MB-1700 SS | -56d | 19d |  |
| MB-1703 |  | Geologist Engineer | 1170d | 2025-07-01 | 2028-09-12 | MB-1001 SS | -72d | 0d |  |
| MB-1704 |  | Sr. Planning Engineer | 1170d | 2025-07-01 | 2028-09-12 | MB-1703 SS | -72d | 0d |  |
| MB-1705 |  | Structure Engineer | 1170d | 2025-07-01 | 2028-09-12 | MB-1704 SS | -72d | 0d |  |
| MB-1706 |  | Method Statement Engineer | 1170d | 2025-07-01 | 2028-09-12 | MB-1705 SS | -72d | 0d |  |
| MB-1707 |  | Instrument Engineer | 1170d | 2025-07-01 | 2028-09-12 | MB-1706 SS | -72d | 0d |  |
| MB-1708 |  | Quantity Survey/Billing Engineer | 1170d | 2025-07-01 | 2028-09-12 | MB-1707 SS | -72d | 0d |  |
| MB-1709 |  | Draftman - 1 | 1170d | 2025-07-01 | 2028-09-12 | MB-1708 SS | -72d | 3d |  |
|  | 8 | **Admin, Finance & HR Department** |  | 2025-01-01 | 2028-09-12 |  |  |  |  |
| MB-1801 |  | Admin Excrutive | 1350d | 2025-01-01 | 2028-09-11 | MB-1002 SS | -71d | 0d |  |
| MB-1802 |  | Acountant Excrutive | 1350d | 2025-01-01 | 2028-09-11 | MB-1801 SS | -71d | 0d |  |
| MB-1803 |  | Acountant Excrutive | 1350d | 2025-01-01 | 2028-09-11 | MB-1802 SS | -71d | 0d |  |
| MB-1804 |  | HR Excrutive | 1350d | 2025-01-01 | 2028-09-11 | MB-1803 SS | -71d | 4d |  |
| MB-1800 |  | Admin, Finance & HR Manager | 1170d | 2025-07-01 | 2028-09-12 | MB-1001 SS | -72d | 0d |  |
| MB-1805 |  | IT Engineer | 1170d | 2025-07-01 | 2028-09-12 | MB-1800 SS | -72d | 0d |  |
| MB-1806 |  | Document Control - 2 | 1170d | 2025-07-01 | 2028-09-12 | MB-1805 SS | -72d | 3d |  |
|  | 9 | **Survey Department** |  | 2025-01-01 | 2028-09-12 |  |  |  |  |
| MB-1900 |  | Chief Survey Manager | 1350d | 2025-01-01 | 2028-09-11 | MB-1002 SS | -71d | 0d |  |
| MB-1901 |  | Survey Supperintendent | 1350d | 2025-01-01 | 2028-09-11 | MB-1900 SS | -71d | 0d |  |
| MB-1902 |  | Survey (Team 1) | 1350d | 2025-01-01 | 2028-09-11 | MB-1901 SS | -71d | 0d |  |
| MB-1903 |  | Asst Survey (Team 1) | 1350d | 2025-01-01 | 2028-09-11 | MB-1902 SS | -71d | 4d |  |
| MB-1904 |  | Survey (Team 2) | 1170d | 2025-07-01 | 2028-09-12 | MB-1001 SS | -72d | 0d |  |
| MB-1905 |  | Asst Survey (Team 2) | 1170d | 2025-07-01 | 2028-09-12 | MB-1904 SS | -72d | 0d |  |
| MB-1906 |  | Survey (Team 3) | 1170d | 2025-07-01 | 2028-09-12 | MB-1905 SS | -72d | 0d |  |
| MB-1907 |  | Asst Survey (Team 3) | 1170d | 2025-07-01 | 2028-09-12 | MB-1906 SS | -72d | 3d |  |

| ID | WBS | Activity | Type | Duration | Start | Finish | Predecessors | Total float | Free float | Constraint |
| --- | --- | --- | --- | --- | --- | --- | --- | --- | --- | --- |
|  | 2 | **Equipment** |  |  | 2025-01-01 | 2027-09-27 |  |  |  |  |
| MB-2000 |  | Manitou Lifting Equipment |  | 1000d | 2025-01-01 | 2027-09-27 |  | 279d | 354d |  |
| MB-2001 |  | Normal Shotcrete Machine |  | 1000d | 2025-01-01 | 2027-09-27 |  | 279d | 354d |  |
| MB-2002 |  | Tower Crane no 1 |  | 1000d | 2025-01-01 | 2027-09-27 |  | 279d | 354d |  |
| MB-2003 |  | Tower Crane no 2 |  | 1000d | 2025-01-01 | 2027-09-27 |  | 279d | 354d |  |
| MB-2004 |  | Tower Crane no 3 |  | 1000d | 2025-01-01 | 2027-09-27 |  | 279d | 354d |  |
| MB-2005 |  | Tower Crane no 4 |  | 1000d | 2025-01-01 | 2027-09-27 |  | 279d | 354d |  |
| MB-2006 |  | Grouting Pump Machine |  | 1000d | 2025-01-01 | 2027-09-27 |  | 279d | 354d |  |
| MB-2007 |  | ROC drilling Machine |  | 1000d | 2025-01-01 | 2027-09-27 |  | 279d | 354d |  |
| MB-2008 |  | Shotcrete Machine |  | 1000d | 2025-01-01 | 2027-09-27 |  | 279d | 354d |  |
| MB-2009 |  | Vertical Shaft Boring Machine |  | 1000d | 2025-01-01 | 2027-09-27 |  | 279d | 354d |  |
|  | 3 | **Site Facilities** |  |  | 2025-01-01 | 2025-08-30 |  |  |  |  |
| MB-3000 |  | Employer's and Contractor Camp Mitlung |  | 90d | 2025-01-01 | 2025-03-31 |  | 91d | 0d |  |
| MB-3020 |  | Employer's and Contractor Camp Tapethok |  | 90d | 2025-01-01 | 2025-03-31 | MB-3000 SS | 152d |  |  |
| MB-3010 |  | Labor Camp at Surge Shaft |  | 75d | 2025-01-31 | 2025-04-15 | MB-3000 SS+30d | 1174d | 1249d |  |
| MB-3030 |  | Batching Plant 60m3/hr. at Mitlung |  | 60d | 2025-05-17 | 2025-07-15 | MB-3000 SS+45d | 0d | 1158d | finish on 2025-07-15 |
| MB-3040 |  | Crusher Plant 120TPH at Mitlung |  | 60d | 2025-05-17 | 2025-07-15 |  | 0d | 1158d | finish on 2025-07-15 |
| MB-3060 |  | Batching Plant No-2 (120m3/hr).at Tapethok |  | 60d | 2025-07-02 | 2025-08-30 | MB-3020 SS+30d, MB-3070 FF | 1037d | 0d |  |
| MB-3070 |  | Crusher Plant (100TPH)at Tapethok |  | 60d | 2025-07-02 | 2025-08-30 | MB-3020 SS+30d | 0d |  | finish on 2025-08-30 |
| MB-3050 |  | Batching Plant No-1 (60m3/hr).at Tapethok |  | 45d | 2025-07-17 | 2025-08-30 | MB-3020 SS+30d, MB-3060 FF | 1037d | 1112d |  |
|  | III | **Project Management and Monitoring** |  |  | 2025-01-01 | 2027-01-10 |  |  |  |  |
| KD-01 |  | Commencement of Development of Construction Programme | milestone | 0d | 2025-06-01 | 2025-06-01 |  | 0d |  | start on 2025-06-01 |
|  | 1 | **Work Schedules** |  |  | 2025-06-01 | 2025-07-10 |  |  |  |  |
| CP-1000 |  | Development of Work Breakdown Structure |  | 10d | 2025-06-01 | 2025-06-10 | KD-01 SS | 1088d | 0d |  |
| CP-1010 |  | Preparation of Detailed Work Schedule |  | 30d | 2025-06-11 | 2025-07-10 | CP-1000 | 1088d | 1163d |  |

| ID | WBS | Activity | Duration | Start | Finish | Predecessors | Total float | Free float | Constraint |
| --- | --- | --- | --- | --- | --- | --- | --- | --- | --- |
|  | 2 | **Geotechnical Investigation Studies** |  | 2025-06-15 | 2025-06-19 |  |  |  |  |
| KD-31 |  | Geotechnical Investigation in Headworks | 5d | 2025-06-15 | 2025-06-19 |  | 1109d | 1184d | start on or after 2025-06-15 |
|  | IFC-DRW | **IFC Drawings** |  | 2025-01-01 | 2026-12-06 |  |  |  |  |
|  | IFC-LOT2I | **IFC Drawings - Headworks (LOT 2-I)** |  | 2025-01-01 | 2026-12-06 |  |  |  |  |
| IFC-2101 |  | Issuance of IFC for Cofferdam & River Diversion Works | 20d | 2025-01-01 | 2025-01-20 |  | 539d | 0d |  |
| IFC-2102 |  | Issuance of IFC for Barrage & Undersluice (Foundation & Micro-piling) | 30d | 2025-02-20 | 2025-03-21 | IFC-2101 FS+30d | 539d | 0d |  |
| IFC-2104 |  | Issuance of IFC for Intake & Gravel Trap (Excavation & Foundation) | 15d | 2025-03-22 | 2025-04-05 | IFC-2102 | 539d | 0d |  |
| IFC-2106 |  | Issuance of IFC for Left Bank Flood Walls (All Sections) | 30d | 2025-03-22 | 2025-04-20 | IFC-2102 | 1169d | 1244d |  |
| IFC-2105 |  | Issuance of IFC for Intake & Gravel Trap (Structural Concrete) | 30d | 2025-07-05 | 2025-08-03 | IFC-2104 FS+90d | 539d | 0d |  |
| IFC-2103 |  | Issuance of IFC for Barrage & Undersluice (Structural Concrete) | 45d | 2025-07-20 | 2025-09-02 | IFC-2102 FS+120d | 992d | 0d |  |
| IFC-2107 |  | Issuance of IFC for Approach Culvert & Settling Basin (Excavation & Foundation) | 15d | 2025-08-04 | 2025-08-18 | IFC-2105 | 539d | 0d |  |
| IFC-2108 |  | Issuance of IFC for Approach Culvert & Settling Basin (Structural Concrete) | 20d | 2026-01-16 | 2026-02-04 | IFC-2107 FS+150d | 539d | 0d |  |
| IFC-2109 |  | Issuance of IFC for Energy Dissipator | 45d | 2026-04-06 | 2026-05-20 | IFC-2108 FS+60d | 539d | 0d |  |
| IFC-2110 |  | Issuance of IFC for Headpond & CFRD (Excavation & Embankment) | 20d | 2026-05-21 | 2026-06-09 | IFC-2109 | 539d | 0d |  |
| IFC-2111 |  | Issuance of IFC for Headpond Lining & Bypass Pipe | 30d | 2026-11-07 | 2026-12-06 | IFC-2110 FS+150d | 539d | 0d |  |
|  | IFC-LOT2III | **IFC Drawings - Penstock & Surge (LOT 2-III)** |  | 2025-01-01 | 2026-03-26 |  |  |  |  |
| IFC-2201 |  | Issuance of IFC for Surge Shaft (Excavation & Support) | 30d | 2025-01-01 | 2025-01-30 |  | 832d | 0d |  |
| IFC-2211 |  | Issuance of IFC for Vertical Pressure Shaft (Excavation & Support) | 45d | 2025-01-31 | 2025-03-16 | IFC-2201 | 832d | 0d |  |
| IFC-2202 |  | Issuance of IFC for Surge Shaft (Concrete Lining) | 30d | 2025-09-28 | 2025-10-27 | IFC-2201 FS+240d | 944d | 0d |  |
| IFC-2221 |  | Issuance of IFC for Horizontal Penstock Shaft (Excavation & Support) | 30d | 2025-12-27 | 2026-01-25 | IFC-3501 FS+210d | 800d | 0d |  |
| IFC-2212 |  | Issuance of IFC for Vertical Pressure Shaft (Steel Liner & Concrete) | 30d | 2026-01-11 | 2026-02-09 | IFC-2211 FS+300d | 832d | 0d |  |
| IFC-2222 |  | Issuance of IFC for Horizontal Penstock Shaft (Steel Liner & Concrete) | 15d | 2026-03-12 | 2026-03-26 | IFC-2221 FS+45d | 800d | 0d |  |
|  | IFC-LOT2IV | **IFC Drawings - Powerhouse & Auxiliary (LOT 2-IV)** |  | 2025-04-01 | 2026-09-12 |  |  |  |  |
| IFC-3101 |  | Issuance of IFC for Ventilation Tunnel (Excavation & Support) | 30d | 2025-04-01 | 2025-04-30 | IFC-4211 FS+60d | 630d | 0d |  |
| IFC-3501 |  | Issuance of IFC for Access Tunnel to Penstock (Excavation & Support) | 30d | 2025-05-01 | 2025-05-30 | IFC-4211 FS+90d | 800d | 0d |  |
| IFC-3201 |  | Issuance of IFC for Powerhouse Cavern (Excavation & Primary Support) | 30d | 2025-05-31 | 2025-06-29 | IFC-3101 FS+30d | 630d | 0d |  |
| IFC-3301 |  | Issuance of IFC for Transformer Cavern (Excavation & Primary Support) | 40d | 2025-06-30 | 2025-08-08 | IFC-3201 SS+30d | 630d | 0d |  |
| IFC-3202 |  | Issuance of IFC for Powerhouse Cavern (Crane Beam & Arch Concrete) | 40d | 2025-10-28 | 2025-12-06 | IFC-3201 FS+120d | 777d | 0d |  |
| IFC-3302 |  | Issuance of IFC for Transformer Cavern (Structural Concrete) | 45d | 2026-01-06 | 2026-02-19 | IFC-3301 FS+150d | 630d | 0d |  |
| IFC-3401 |  | Issuance of IFC for Cable Tunnel (Excavation & Lining) | 30d | 2026-02-20 | 2026-03-21 | IFC-3302 | 630d | 0d |  |
| IFC-3203 |  | Issuance of IFC for Powerhouse Cavern (Substructure & Draft Tube Concrete) | 30d | 2026-03-07 | 2026-04-05 | IFC-3202 FS+90d | 777d | 0d |  |
| IFC-3601 |  | Issuance of IFC for Drainage Gallery (Excavation & Lining) | 25d | 2026-04-21 | 2026-05-15 | IFC-3401 FS+30d | 630d | 0d |  |
| IFC-3701 |  | Issuance of IFC for Escape Tunnel (Excavation & Lining) | 30d | 2026-08-14 | 2026-09-12 | IFC-3601 FS+90d | 630d | 0d |  |

| ID | WBS | Activity | Duration | Start | Finish | Predecessors | Total float | Free float |
| --- | --- | --- | --- | --- | --- | --- | --- | --- |
|  | IFC-LOT2V | **IFC Drawings - Access & Tailrace Tunnels (LOT 2-V)** |  | 2025-01-01 | 2025-12-16 |  |  |  |
| IFC-4201 |  | Issuance of IFC for Tailrace Tunnel (Portal & Excavation Support) | 30d | 2025-01-01 | 2025-01-30 |  | 954d | 0d |
| IFC-4211 |  | Issuance of IFC for Main Access Tunnel (Portal & Excavation Support) | 30d | 2025-01-01 | 2025-01-30 |  | 630d | 0d |
| IFC-4202 |  | Issuance of IFC for Tailrace Tunnel (Concrete Lining & Outlet Works) | 20d | 2025-09-28 | 2025-10-17 | IFC-4201 FS+240d | 954d | 0d |
| IFC-4212 |  | Issuance of IFC for Main Access Tunnel (Final Lining & Pavement) | 20d | 2025-11-27 | 2025-12-16 | IFC-4211 FS+300d | 894d | 0d |
|  | IFC-LOT3 | **IFC Drawings - Hydromechanical Works** |  | 2025-01-01 | 2025-11-26 |  |  |  |
| IFC-5101 |  | Approval of HM Design for Intake & Undersluice Gates | 60d | 2025-01-01 | 2025-03-01 |  | 907d | 0d |
| IFC-5102 |  | Approval of HM Design for Settling Basin & Headpond Gates | 60d | 2025-05-31 | 2025-07-29 | IFC-5101 FS+90d | 907d | 0d |
| IFC-5201 |  | Approval of HM Design for Penstock Pipes & Manifolds | 60d | 2025-09-28 | 2025-11-26 | IFC-5102 FS+60d | 907d | 0d |
|  | IFC-LOT4 | **IFC Drawings - Electromechanical Works** |  | 2025-01-01 | 2025-09-27 |  |  |  |
| IFC-6002 |  | Approval of EM Design for Powerhouse Cranes | 45d | 2025-01-01 | 2025-02-14 |  | 967d | 0d |
| IFC-6001 |  | Approval of EM Design for Turbine & Generator | 45d | 2025-03-17 | 2025-04-30 | IFC-6002 FS+30d | 967d | 0d |
| IFC-6003 |  | Approval of EM Design for Transformers & Switchgear | 60d | 2025-05-31 | 2025-07-29 | IFC-6001 FS+30d | 967d | 0d |
| IFC-6004 |  | Approval of EM Design for Balance of Plant (BOP) | 30d | 2025-08-29 | 2025-09-27 | IFC-6003 FS+30d | 967d | 0d |
|  | IFC-LOT5 | **IFC Drawings - Transmission Line (LOT 5)** |  | 2025-01-01 | 2025-08-28 |  |  |  |
| IFC-2501 |  | Issuance of IFC for Transmission Line (Foundations & Access) | 60d | 2025-01-01 | 2025-03-01 |  | 1010d | 0d |
| IFC-2502 |  | Issuance of IFC for Transmission Line (Tower & Stringing Details) | 90d | 2025-05-31 | 2025-08-28 | IFC-2501 FS+90d | 1010d | 0d |
|  | MS | **Method Statements** |  | 2025-01-21 | 2027-01-10 |  |  |  |
|  | MS-LOT2I | **Method Statements - Headworks (LOT 2-I)** |  | 2025-01-21 | 2027-01-10 |  |  |  |
| MS-2I-2101-S |  | Submission of MS for Cofferdam & River Diversion | 21d | 2025-01-21 | 2025-02-10 | IFC-2101 | 1224d | 0d |
| MS-2I-2101-A |  | Approval of MS for Cofferdam & River Diversion | 14d | 2025-02-11 | 2025-02-24 | MS-2I-2101-S | 1224d | 1299d |
| MS-2I-2102-S |  | Submission of MS for Barrage & Undersluice Foundations | 21d | 2025-03-22 | 2025-04-11 | IFC-2102 | 1164d | 0d |
| MS-2I-2104-S |  | Submission of MS for Intake & Gravel Trap Foundations | 21d | 2025-04-06 | 2025-04-26 | IFC-2104 | 1149d | 0d |
| MS-2I-2102-A |  | Approval of MS for Barrage & Undersluice Foundations | 14d | 2025-04-12 | 2025-04-25 | MS-2I-2102-S | 1164d | 1239d |
| MS-2I-2104-A |  | Approval of MS for Intake & Gravel Trap Foundations | 14d | 2025-04-27 | 2025-05-10 | MS-2I-2104-S | 1149d | 1224d |
| MS-2I-2105-S |  | Submission of MS for Intake & Gravel Trap Concrete | 21d | 2025-08-04 | 2025-08-24 | IFC-2105 | 1022d | 0d |
| MS-2I-2107-S |  | Submission of MS for Settling Basin Excavation & Foundations | 21d | 2025-08-19 | 2025-09-08 | IFC-2107 | 1014d | 0d |
| MS-2I-2105-A |  | Approval of MS for Intake & Gravel Trap Concrete | 21d | 2025-08-25 | 2025-09-14 | MS-2I-2105-S | 1022d | 1097d |
| MS-2I-2103-S |  | Submission of MS for Barrage & Undersluice Concrete | 21d | 2025-09-03 | 2025-09-23 | IFC-2103 | 992d | 0d |
| MS-2I-2107-A |  | Approval of MS for Settling Basin Excavation & Foundations | 14d | 2025-09-09 | 2025-09-22 | MS-2I-2107-S | 1014d | 1089d |
| MS-2I-2103-A |  | Approval of MS for Barrage & Undersluice Concrete | 21d | 2025-09-24 | 2025-10-14 | MS-2I-2103-S | 992d | 1067d |
| MS-2I-2108-S |  | Submission of MS for Settling Basin Structural Concrete | 21d | 2026-02-05 | 2026-02-25 | IFC-2108 | 837d | 0d |
| MS-2I-2108-A |  | Approval of MS for Settling Basin Structural Concrete | 21d | 2026-02-26 | 2026-03-18 | MS-2I-2108-S | 837d | 912d |
| MS-2I-2110-S |  | Submission of MS for Headpond & CFRD Embankment | 21d | 2026-06-10 | 2026-06-30 | IFC-2110 | 712d | 0d |
| MS-2I-2110-A |  | Approval of MS for Headpond & CFRD Embankment | 21d | 2026-07-01 | 2026-07-21 | MS-2I-2110-S | 712d | 787d |
| MS-2I-2111-S |  | Submission of MS for Headpond Lining & Bypass Pipe | 21d | 2026-12-07 | 2026-12-27 | IFC-2111 | 539d | 0d |
| MS-2I-2111-A |  | Approval of MS for Headpond Lining & Bypass Pipe | 14d | 2026-12-28 | 2027-01-10 | MS-2I-2111-S | 539d | 614d |

| ID | WBS | Activity | Duration | Start | Finish | Predecessors | Total float | Free float |
| --- | --- | --- | --- | --- | --- | --- | --- | --- |
|  | MS-LOT2III | **Method Statements - Penstock & Surge (LOT 2-III)** |  | 2025-01-31 | 2026-04-24 |  |  |  |
| MS-2III-2201-S |  | Submission of MS for Surge Shaft Excavation | 21d | 2025-01-31 | 2025-02-20 | IFC-2201 | 1214d | 0d |
| MS-2III-2201-A |  | Approval of MS for Surge Shaft Excavation | 14d | 2025-02-21 | 2025-03-06 | MS-2III-2201-S | 1214d | 1289d |
| MS-2III-2211-S |  | Submission of MS for Vertical Pressure Shaft Excavation | 21d | 2025-03-17 | 2025-04-06 | IFC-2211 | 1169d | 0d |
| MS-2III-2211-A |  | Approval of MS for Vertical Pressure Shaft Excavation | 14d | 2025-04-07 | 2025-04-20 | MS-2III-2211-S | 1169d | 1244d |
| MS-2III-2202-S |  | Submission of MS for Surge Shaft Lining | 21d | 2025-10-28 | 2025-11-17 | IFC-2202 | 944d | 0d |
| MS-2III-2202-A |  | Approval of MS for Surge Shaft Lining | 14d | 2025-11-18 | 2025-12-01 | MS-2III-2202-S | 944d | 1019d |
| MS-2III-2221-S |  | Submission of MS for Horizontal Penstock Excavation | 15d | 2026-01-26 | 2026-02-09 | IFC-2221 | 860d | 0d |
| MS-2III-2212-S |  | Submission of MS for VPS Steel Liner & Concrete | 21d | 2026-02-10 | 2026-03-02 | IFC-2212 | 832d | 0d |
| MS-2III-2221-A |  | Approval of MS for Horizontal Penstock Excavation | 14d | 2026-02-10 | 2026-02-23 | MS-2III-2221-S | 860d | 935d |
| MS-2III-2212-A |  | Approval of MS for VPS Steel Liner & Concrete | 21d | 2026-03-03 | 2026-03-23 | MS-2III-2212-S | 832d | 907d |
| MS-2III-2222-S |  | Submission of MS for HPS Steel Liner & Concrete | 15d | 2026-03-27 | 2026-04-10 | IFC-2222 | 800d | 0d |
| MS-2III-2222-A |  | Approval of MS for HPS Steel Liner & Concrete | 14d | 2026-04-11 | 2026-04-24 | MS-2III-2222-S | 800d | 875d |
|  | MS-LOT2IV | **Method Statements - Powerhouse & Auxiliary (LOT 2-IV)** |  | 2025-05-01 | 2026-10-11 |  |  |  |
| MS-2IV-3101-S |  | Submission of MS for Ventilation Tunnel | 15d | 2025-05-01 | 2025-05-15 | IFC-3101 | 1130d | 0d |
| MS-2IV-3101-A |  | Approval of MS for Ventilation Tunnel | 14d | 2025-05-16 | 2025-05-29 | MS-2IV-3101-S | 1130d | 1205d |
| MS-2IV-3501-S |  | Submission of MS for Access Tunnel to Penstock | 21d | 2025-05-31 | 2025-06-20 | IFC-3501 | 1094d | 0d |
| MS-2IV-3501-A |  | Approval of MS for Access Tunnel to Penstock | 14d | 2025-06-21 | 2025-07-04 | MS-2IV-3501-S | 1094d | 1169d |
| MS-2IV-3201-S |  | Submission of MS for Powerhouse Cavern Excavation | 21d | 2025-06-30 | 2025-07-20 | IFC-3201 | 1064d | 0d |
| MS-2IV-3201-A |  | Approval of MS for Powerhouse Cavern Excavation | 14d | 2025-07-21 | 2025-08-03 | MS-2IV-3201-S | 1064d | 1139d |
| MS-2IV-3301-S |  | Submission of MS for Transformer Cavern Excavation | 21d | 2025-08-09 | 2025-08-29 | IFC-3301 | 1024d | 0d |
| MS-2IV-3301-A |  | Approval of MS for Transformer Cavern Excavation | 14d | 2025-08-30 | 2025-09-12 | MS-2IV-3301-S | 1024d | 1099d |
| MS-2IV-3202-S |  | Submission of MS for PHC Crane Beam & Arch Concrete | 21d | 2025-12-07 | 2025-12-27 | IFC-3202 | 904d | 0d |
| MS-2IV-3202-A |  | Approval of MS for PHC Crane Beam & Arch Concrete | 14d | 2025-12-28 | 2026-01-10 | MS-2IV-3202-S | 904d | 979d |
| MS-2IV-3302-S |  | Submission of MS for TC Structural Concrete | 21d | 2026-02-20 | 2026-03-12 | IFC-3302 | 829d | 0d |
| MS-2IV-3302-A |  | Approval of MS for TC Structural Concrete | 14d | 2026-03-13 | 2026-03-26 | MS-2IV-3302-S | 829d | 904d |
| MS-2IV-3401-S |  | Submission of MS for Cable Tunnel | 15d | 2026-03-22 | 2026-04-05 | IFC-3401 | 805d | 0d |
| MS-2IV-3203-S |  | Submission of MS for PHC Substructure & Draft Tube Concrete | 21d | 2026-04-06 | 2026-04-26 | IFC-3203 | 777d | 0d |
| MS-2IV-3401-A |  | Approval of MS for Cable Tunnel | 14d | 2026-04-06 | 2026-04-19 | MS-2IV-3401-S | 805d | 880d |
| MS-2IV-3203-A |  | Approval of MS for PHC Substructure & Draft Tube Concrete | 21d | 2026-04-27 | 2026-05-17 | MS-2IV-3203-S | 777d | 852d |
| MS-2IV-3601-S |  | Submission of MS for Drainage Gallery | 15d | 2026-05-16 | 2026-05-30 | IFC-3601 | 750d | 0d |
| MS-2IV-3601-A |  | Approval of MS for Drainage Gallery | 14d | 2026-05-31 | 2026-06-13 | MS-2IV-3601-S | 750d | 825d |
| MS-2IV-3701-S |  | Submission of MS for Escape Tunnel | 15d | 2026-09-13 | 2026-09-27 | IFC-3701 | 630d | 0d |
| MS-2IV-3701-A |  | Approval of MS for Escape Tunnel | 14d | 2026-09-28 | 2026-10-11 | MS-2IV-3701-S | 630d | 705d |

| ID | WBS | Activity | Duration | Start | Finish | Predecessors | Total float | Free float |
| --- | --- | --- | --- | --- | --- | --- | --- | --- |
|  | MS-LOT2V | **Method Statements - Access & Tailrace Tunnels (LOT 2-V)** |  | 2025-01-31 | 2026-01-20 |  |  |  |
| MS-2V-4201-S |  | Submission of MS for Tailrace Tunnel (Portal & Excavation) | 21d | 2025-01-31 | 2025-02-20 | IFC-4201 | 1214d | 0d |
| MS-2V-4211-S |  | Submission of MS for Main Access Tunnel (Portal & Excavation) | 21d | 2025-01-31 | 2025-02-20 | IFC-4211 | 1214d | 0d |
| MS-2V-4201-A |  | Approval of MS for Tailrace Tunnel (Portal & Excavation) | 14d | 2025-02-21 | 2025-03-06 | MS-2V-4201-S | 1214d | 1289d |
| MS-2V-4211-A |  | Approval of MS for Main Access Tunnel (Portal & Excavation) | 14d | 2025-02-21 | 2025-03-06 | MS-2V-4211-S | 1214d | 1289d |
| MS-2V-4202-S |  | Submission of MS for Tailrace Tunnel (Lining & Outlet) | 21d | 2025-10-18 | 2025-11-07 | IFC-4202 | 954d | 0d |
| MS-2V-4202-A |  | Approval of MS for Tailrace Tunnel (Lining & Outlet) | 14d | 2025-11-08 | 2025-11-21 | MS-2V-4202-S | 954d | 1029d |
| MS-2V-4212-S |  | Submission of MS for Main Access Tunnel (Lining & Pavement) | 21d | 2025-12-17 | 2026-01-06 | IFC-4212 | 894d | 0d |
| MS-2V-4212-A |  | Approval of MS for Main Access Tunnel (Lining & Pavement) | 14d | 2026-01-07 | 2026-01-20 | MS-2V-4212-S | 894d | 969d |
|  | MS-LOT3 | **Method Statements - Hydromechanical Works** |  | 2025-03-02 | 2026-01-07 |  |  |  |
| MS-3-5101-S |  | Submission of MS for Fabrication & Installation of Intake & Undersluice Gates | 21d | 2025-03-02 | 2025-03-22 | IFC-5101 | 1177d | 0d |
| MS-3-5101-A |  | Approval of MS for Fabrication & Installation of Intake & Undersluice Gates | 21d | 2025-03-23 | 2025-04-12 | MS-3-5101-S | 1177d | 1252d |
| MS-3-5102-S |  | Submission of MS for Fabrication & Installation of Waterway Gates | 21d | 2025-07-30 | 2025-08-19 | IFC-5102 | 1027d | 0d |
| MS-3-5102-A |  | Approval of MS for Fabrication & Installation of Waterway Gates | 21d | 2025-08-20 | 2025-09-09 | MS-3-5102-S | 1027d | 1102d |
| MS-3-5201-S |  | Submission of MS for Fabrication & Installation of Penstock | 21d | 2025-11-27 | 2025-12-17 | IFC-5201 | 907d | 0d |
| MS-3-5201-A |  | Approval of MS for Fabrication & Installation of Penstock | 21d | 2025-12-18 | 2026-01-07 | MS-3-5201-S | 907d | 982d |
|  | MS-LOT4 | **Method Statements - Electromechanical Works** |  | 2025-02-15 | 2025-11-08 |  |  |  |
| MS-4-6002-S |  | Submission of MS for Installation of Powerhouse Cranes | 15d | 2025-02-15 | 2025-03-01 | IFC-6002 | 1205d | 0d |
| MS-4-6002-A |  | Approval of MS for Installation of Powerhouse Cranes | 14d | 2025-03-02 | 2025-03-15 | MS-4-6002-S | 1205d | 1280d |
| MS-4-6001-S |  | Submission of MS for Installation of Turbine & Generator | 21d | 2025-05-01 | 2025-05-21 | IFC-6001 | 1117d | 0d |
| MS-4-6001-A |  | Approval of MS for Installation of Turbine & Generator | 21d | 2025-05-22 | 2025-06-11 | MS-4-6001-S | 1117d | 1192d |
| MS-4-6003-S |  | Submission of MS for Installation of Transformers & Switchgear | 21d | 2025-07-30 | 2025-08-19 | IFC-6003 | 1027d | 0d |
| MS-4-6003-A |  | Approval of MS for Installation of Transformers & Switchgear | 21d | 2025-08-20 | 2025-09-09 | MS-4-6003-S | 1027d | 1102d |
| MS-4-6004-S |  | Submission of MS for Installation of Balance of Plant (BOP) | 21d | 2025-09-28 | 2025-10-18 | IFC-6004 | 967d | 0d |
| MS-4-6004-A |  | Approval of MS for Installation of Balance of Plant (BOP) | 21d | 2025-10-19 | 2025-11-08 | MS-4-6004-S | 967d | 1042d |

| ID | WBS | Activity | Type | Duration | Start | Finish | Predecessors | Total float | Free float | Constraint | Resources |
| --- | --- | --- | --- | --- | --- | --- | --- | --- | --- | --- | --- |
|  | MS-LOT5 | **Method Statements - Transmission Line (LOT 5)** |  |  | 2025-03-02 | 2025-09-26 |  |  |  |  |  |
| MS-5-2501-S |  | Submission of MS for TL Foundations & Access |  | 15d | 2025-03-02 | 2025-03-16 | IFC-2501 | 1190d | 0d |  |  |
| MS-5-2501-A |  | Approval of MS for TL Foundations & Access |  | 14d | 2025-03-17 | 2025-03-30 | MS-5-2501-S | 1190d | 1265d |  |  |
| MS-5-2502-S |  | Submission of MS for TL Tower Erection & Stringing |  | 15d | 2025-08-29 | 2025-09-12 | IFC-2502 | 1010d | 0d |  |  |
| MS-5-2502-A |  | Approval of MS for TL Tower Erection & Stringing |  | 14d | 2025-09-13 | 2025-09-26 | MS-5-2502-S | 1010d | 1085d |  |  |
|  | 2 | **Construction of Main Civil Works** |  |  | 2025-01-01 | 2028-03-24 |  |  |  |  |  |
|  | 1 | **Construction Headworks (LOT 2-I)** |  |  | 2025-01-01 | 2028-03-24 |  |  |  |  |  |
|  | 1.1 | **Cofferdam & River Diversion Works** |  |  | 2025-01-01 | 2025-11-01 |  |  |  |  |  |
| KD-04 |  | Commencement of River Diversion Works | milestone | 0d | 2025-11-01 | 2025-11-01 |  | 0d | 1050d | start on 2025-11-01 |  |
| L-1000 |  | River Diversion Works | level of effort | 0d | 2025-11-01 | 2025-11-01 | KD-04 SS | 975d | 0d |  | Concrete |
|  | 1 | **Preparatory & Site Works** |  |  | 2025-01-01 | 2025-06-19 |  |  |  |  |  |
| CD-1010 |  | Mobilization of Specialized Plant & Personnel for Cofferdam Works |  | 20d | 2025-01-01 | 2025-01-20 |  | 997d | 0d |  |  |
| CD-1020 |  | Procurement and Delivery of Boulders and Clay |  | 120d | 2025-01-21 | 2025-05-20 | CD-1010 | 1139d | 1214d |  |  |
| CD-1030 |  | Procurement and Delivery of Geomembrane and Filter Fabric |  | 150d | 2025-01-21 | 2025-06-19 | CD-1010 | 997d | 0d |  |  |
|  | 2 | **River Control & Foundation Works** |  |  | 2025-01-21 | 2025-04-05 |  |  |  |  |  |
| CD-2010 |  | Survey, Setting Out, and Site Clearing for Cofferdam & Diversion |  | 15d | 2025-01-21 | 2025-02-04 | CD-1010 | 1184d | 0d |  |  |
| CD-2020 |  | Construct Temporary Diversion Channel and Dewatering System |  | 45d | 2025-02-05 | 2025-03-21 | CD-2010 | 1184d | 0d |  |  |
| CD-2030 |  | Foundation Preparation and Cleanup |  | 15d | 2025-03-22 | 2025-04-05 | CD-2020 | 1184d | 1259d |  |  |
|  | 3 | **Cofferdam Embankment Construction** |  |  | 2025-01-01 | 2025-05-30 |  |  |  |  |  |
| CD-3010 |  | Earthwork: Filling of Muck for Cofferdam Body (Layer by Layer Compaction) |  | 150d | 2025-01-01 | 2025-05-30 |  | 979d | 0d |  |  |
| CD-3020 |  | Core Construction: Laying of Impervious Clay Layer |  | 130d | 2025-01-21 | 2025-05-30 | CD-3010 SS+20d | 1129d | 1204d |  |  |
|  | 4 | **Protection & Surface Works** |  |  | 2025-06-20 | 2025-09-12 |  |  |  |  |  |
| CD-4010 |  | Protection Layers: Install Graded Filter, Plastic Liner & Geomembrane |  | 40d | 2025-06-20 | 2025-07-29 | CD-3010, CD-1030 | 997d | 0d |  |  |
| CD-4020 |  | Surface Works: Boulder Lining and Stone Pitching |  | 45d | 2025-07-30 | 2025-09-12 | CD-4010 | 997d | 0d |  |  |

| ID | WBS | Activity | Type | Duration | Start | Finish | Predecessors | Total float | Free float | Constraint | Resources | Cost |
| --- | --- | --- | --- | --- | --- | --- | --- | --- | --- | --- | --- | --- |
|  | 5 | **Finalization & Inspection** |  |  | 2025-05-31 | 2025-10-27 |  |  |  |  |  |  |
| CD-5010 |  | Installation of Instrumentation (Piezometers) |  | 150d | 2025-05-31 | 2025-10-27 | CD-3010 | 979d | 1054d |  |  |  |
| CD-5020 |  | Final Grading, Site Cleanup, and Inspection |  | 17d | 2025-09-13 | 2025-09-29 | CD-4020 | 997d | 0d |  |  |  |
| CD-5030 |  | Demobilization of Cofferdam-specific resources |  | 10d | 2025-09-30 | 2025-10-09 | CD-5020 | 997d | 1072d |  |  |  |
|  | 1.2 | **Undersluice and Barrage** |  |  | 2025-12-31 | 2027-11-12 |  |  |  |  |  |  |
| A-1030 |  | Foundation Prep & Excavation |  | 228d | 2025-12-31 | 2026-08-15 | KD-05 SS | 233d | 0d |  |  |  |
| KD-05 |  | Commencement of Construction of Barrage Structures | milestone | 0d | 2025-12-31 | 2025-12-31 |  | 0d |  | start on 2025-12-31 |  |  |
| L-1010 |  | Undersluics and Barrage | level of effort | 682d | 2025-12-31 | 2027-11-12 | KD-05 SS | 233d | 0d |  | Concrete [67137.1 m3] | 1,007,056,350 |
| A-1040 |  | Concrete Works for Undersluice & Barrage |  | 227d | 2026-08-16 | 2027-03-30 | A-1030 | 233d | 0d |  |  |  |
| A-1050 |  | Spillway & Right Bank Flood Wall Construction |  | 227d | 2027-03-31 | 2027-11-12 | A-1040, L-1010 FF | 233d | 308d |  |  |  |
|  | 1.3 | **Intake & Gravel Trap** |  |  | 2025-12-31 | 2027-03-02 |  |  |  |  |  |  |
| A-1060 |  | Excavation for Intake & Gravel Trap |  | 143d | 2025-12-31 | 2026-05-22 | KD-06 SS | 488d | 0d |  |  |  |
| KD-06 |  | Commencement of Construction of Intake Structures | milestone | 0d | 2025-12-31 | 2025-12-31 |  | 0d |  | start on 2025-12-31 |  |  |
| A-1070 |  | Intake Structure Concrete Works |  | 142d | 2026-05-23 | 2026-10-11 | A-1060 | 488d | 0d |  |  |  |
| A-1080 |  | Gravel Trap & Spillway Construction |  | 142d | 2026-10-12 | 2027-03-02 | A-1070 | 488d | 563d |  |  |  |
|  | 1.4 | **Flood Walls** |  |  | 2025-12-31 | 2027-09-16 |  |  |  |  |  |  |
| A-1090 |  | Excavate for US Left Bank Wall |  | 209d | 2025-12-31 | 2026-07-27 | KD-07 SS | 290d | 0d |  |  |  |
| KD-07 |  | Commencement of Construction of Upstream Flood Walls | milestone | 0d | 2025-12-31 | 2025-12-31 |  | 0d |  | start on 2025-12-31 |  |  |
| A-1100 |  | Construct US Left Bank Wall |  | 208d | 2026-07-28 | 2027-02-20 | A-1090 | 290d | 0d |  |  |  |
| A-1110 |  | Construct DS Left Bank Wall to Sill |  | 208d | 2027-02-21 | 2027-09-16 | A-1100 | 290d | 365d |  |  |  |
|  | 1.5 | **DS Left Bank Flood Wall** |  |  | 2026-03-01 | 2027-11-15 |  |  |  |  |  |  |
| A-1120 |  | Excavate Wall Foundation Post-Sill |  | 313d | 2026-03-01 | 2027-01-07 | KD-08 SS | 230d | 0d |  |  |  |
| KD-08 |  | Commencement of Construction of Downstream Flood Walls | milestone | 0d | 2026-03-01 | 2026-03-01 |  | 0d |  | start on 2026-03-01 |  |  |
| A-1130 |  | Construct Flood Wall Post-Sill |  | 312d | 2027-01-08 | 2027-11-15 | A-1120 | 230d | 305d |  |  |  |

| ID | WBS | Activity | Type | Duration | Start | Finish | Predecessors | Total float | Free float | Constraint |
| --- | --- | --- | --- | --- | --- | --- | --- | --- | --- | --- |
|  | 1.6 | **Approach Culvert & Settling Basin** |  |  | 2025-12-31 | 2028-03-24 |  |  |  |  |
| A-1140 |  | Approach Culvert Excavation |  | 272d | 2025-12-31 | 2026-09-28 | KD-09 SS | 100d | 0d |  |
| KD-09 |  | Commencement of Approach Culvert and Settling Basin | milestone | 0d | 2025-12-31 | 2025-12-31 |  | 0d |  | start on 2025-12-31 |
| A-1150 |  | Settling Basin Construction |  | 271d | 2026-09-29 | 2027-06-26 | A-1140 | 100d | 0d |  |
| A-1160 |  | Energy Dissipator & Spillway Construction |  | 272d | 2027-06-27 | 2028-03-24 | A-1150 | 100d | 175d |  |
|  | 1.7 | **Headpond & Bypass Pipe** |  |  | 2025-12-31 | 2027-11-30 |  |  |  |  |
| A-1170 |  | Headpond Excavation & Prep |  | 280d | 2025-12-31 | 2026-10-06 | KD-10 SS | 215d | 0d |  |
| KD-10 |  | Commencement of Headpond and Bypass Pipe | milestone | 0d | 2025-12-31 | 2025-12-31 |  | 0d |  | start on 2025-12-31 |
| A-1180 |  | Headpond Concrete & Lining |  | 210d | 2026-10-07 | 2027-05-04 | A-1170 | 215d | 0d |  |
| A-1190 |  | Bypass Pipe Installation & Connection |  | 210d | 2027-05-05 | 2027-11-30 | A-1180 | 215d | 290d |  |
|  | 2 | **Construction of Surge & Penstock (LOT 2-III)** |  |  | 2025-11-01 | 2028-01-09 |  |  |  |  |
|  | 2.1 | **Surge Shaft & Connecting Tunnel** |  |  | 2025-11-01 | 2027-01-04 |  |  |  |  |
| A-1200 |  | Surge Shaft Excavation |  | 215d | 2025-11-01 | 2026-06-03 | KD-11 SS | 545d | 0d |  |
| KD-11 |  | Commencement of Construction of Surga Shaft and Surge Tunnel | milestone | 0d | 2025-11-01 | 2025-11-01 |  | 0d |  | start on 2025-11-01 |
| A-1210 |  | Connecting Tunnel Excavation & Support |  | 215d | 2026-06-04 | 2027-01-04 | A-1200 | 545d | 620d |  |
|  | 2.2 | **Vertical Pressure Shaft (VPS)** |  |  | 2025-11-01 | 2028-01-09 |  |  |  |  |
| A-1220 |  | VPS Site Prep & Raise Boring |  | 400d | 2025-11-01 | 2026-12-05 | KD-12 SS | 175d | 0d |  |
| KD-12 |  | Commencement of Construction of Vertical Pressure Shaft | milestone | 0d | 2025-11-01 | 2025-11-01 |  | 0d |  | start on 2025-11-01 |
| A-1230 |  | VPS Steel Lining & Installation |  | 400d | 2026-12-06 | 2028-01-09 | A-1220 | 175d | 250d |  |
|  | 2.3 | **Penstock Tunnel (HPS)** |  |  | 2026-01-25 | 2026-04-17 |  |  |  |  |
| A-1240 |  | HPS Excavation & Support |  | 42d | 2026-01-25 | 2026-03-07 | KD-13 SS | 807d | 0d |  |
| KD-13 |  | Commencement of Construction of Penstock Tunnel | milestone | 0d | 2026-01-25 | 2026-01-25 |  | 0d |  | start on 2026-01-25 |
| A-1250 |  | HPS Concrete Lining & Finishing |  | 41d | 2026-03-08 | 2026-04-17 | A-1240 | 807d | 882d |  |
|  | 3 | **Construction of Powerhouse Caverns (LOT 2-IV)** |  |  | 2025-08-13 | 2027-07-31 |  |  |  |  |
|  | 3.1 | **Ventilation Tunnel to PHC & TC** |  |  | 2025-08-13 | 2025-11-30 |  |  |  |  |
| A-1260 |  | Ventilation Tunnel Excavation |  | 55d | 2025-08-13 | 2025-10-06 | KD-14 SS | 945d | 0d |  |
| KD-14 |  | Commencement of Construction of Ventilation to PHC and TC | milestone | 0d | 2025-08-13 | 2025-08-13 |  | 0d |  | start on 2025-08-13 |
| A-1270 |  | Ventilation Tunnel Lining & Systems |  | 55d | 2025-10-07 | 2025-11-30 | A-1260 | 945d | 1020d |  |

| ID | WBS | Activity | Type | Duration | Start | Finish | Predecessors | Total float | Free float | Constraint |
| --- | --- | --- | --- | --- | --- | --- | --- | --- | --- | --- |
|  | 3.2 | **Powerhouse Cavern (PHC)** |  |  | 2025-11-16 | 2027-07-31 |  |  |  |  |
| A-1280 |  | PHC Cavern Excavation & Benching |  | 312d | 2025-11-16 | 2026-09-23 | KD-15 SS | 337d | 0d |  |
| KD-15 |  | Commencement of Construction of Powerhouse Cavern | milestone | 0d | 2025-11-16 | 2025-11-16 |  | 0d |  | start on 2025-11-16 |
| A-1290 |  | PHC Cavern Concrete & Structural Works |  | 311d | 2026-09-24 | 2027-07-31 | A-1280 | 337d | 412d |  |
|  | 3.3 | **Transformer Cavern (TC)** |  |  | 2026-01-05 | 2027-07-27 |  |  |  |  |
| A-1300 |  | TC Cavern Excavation & Support |  | 285d | 2026-01-05 | 2026-10-16 | KD-16 SS | 341d | 0d |  |
| KD-16 |  | Commencement of Construction of Transformer Cavern | milestone | 0d | 2026-01-05 | 2026-01-05 |  | 0d |  | start on 2026-01-05 |
| A-1310 |  | TC Cavern Concrete & Finishing |  | 284d | 2026-10-17 | 2027-07-27 | A-1300 | 341d | 416d |  |
|  | 3.4 | **Cable Tunnel** |  |  | 2026-11-04 | 2026-12-13 |  |  |  |  |
| A-1320 |  | Cable Tunnel Excavation & Lining |  | 40d | 2026-11-04 | 2026-12-13 | KD-17 SS | 567d | 642d |  |
| KD-17 |  | Commencement of Construction of Cable Tunnel | milestone | 0d | 2026-11-04 | 2026-11-04 |  | 0d |  | start on 2026-11-04 |
|  | 3.5 | **Access Tunnel to Penstock Shaft** |  |  | 2025-09-12 | 2026-09-29 |  |  |  |  |
| A-1330 |  | Access Tunnel Excavation |  | 193d | 2025-09-12 | 2026-03-23 | KD-18 SS | 642d | 0d |  |
| KD-18 |  | Commencement of Construction of Access Tunnel to Penstock Shaft | milestone | 0d | 2025-09-12 | 2025-09-12 |  | 0d |  | start on 2025-09-12 |
| A-1340 |  | Access Tunnel Lining & Finishing |  | 190d | 2026-03-24 | 2026-09-29 | A-1330 | 642d | 717d |  |
|  | 3.6 | **Drainage Galley** |  |  | 2026-11-04 | 2027-07-21 |  |  |  |  |
| A-1350 |  | Drainage Galley Excavation |  | 130d | 2026-11-04 | 2027-03-13 | KD-19 SS | 347d | 0d |  |
| KD-19 |  | Commencement of Construction of Drainage Gallery | milestone | 0d | 2026-11-04 | 2026-11-04 |  | 0d |  | start on 2026-11-04 |
| A-1360 |  | Drainage Galley Concrete Works |  | 130d | 2027-03-14 | 2027-07-21 | A-1350 | 347d | 422d |  |
|  | 3.7 | **Escape Tunnel** |  |  | 2027-03-24 | 2027-07-31 |  |  |  |  |
| A-1370 |  | Escape Tunnel Excavation & Support |  | 65d | 2027-03-24 | 2027-05-27 | KD-20 SS | 337d | 0d |  |
| KD-20 |  | Commencement of Construction of Escape Tunnel | milestone | 0d | 2027-03-24 | 2027-03-24 |  | 0d |  | start on 2027-03-24 |
| A-1380 |  | Escape Tunnel Concrete & Finishes |  | 65d | 2027-05-28 | 2027-07-31 | A-1370 | 337d | 412d |  |
|  | 4 | **Construction of Tunnels (LOT 2-V)** |  |  | 2025-02-14 | 2027-10-24 |  |  |  |  |
|  | 4.1 | **Main Access Tunnel** |  |  | 2025-02-14 | 2027-10-24 |  |  |  |  |
| A-1390 |  | Tunnel Boring Machine (TBM) Mobilization |  | 330d | 2025-02-14 | 2026-01-09 | KD-21 SS | 252d | 0d |  |
| KD-21 |  | Commencement of Construction of Main Access Tunnel | milestone | 0d | 2025-02-14 | 2025-02-14 |  | 0d |  | start on 2025-02-14 |
| A-1400 |  | Main Access Tunnel Boring |  | 330d | 2026-01-10 | 2026-12-05 | A-1390 | 252d | 0d |  |
| A-1410 |  | Tunnel Finishing & Demobilization |  | 323d | 2026-12-06 | 2027-10-24 | A-1400 | 252d | 327d |  |

| ID | WBS | Activity | Type | Duration | Start | Finish | Predecessors | Total float | Free float | Constraint |
| --- | --- | --- | --- | --- | --- | --- | --- | --- | --- | --- |
|  | 4.2 | **Tailrace Channel (TRC)** |  |  | 2025-02-14 | 2027-02-07 |  |  |  |  |
| A-1420 |  | TRC Excavation & Earthworks |  | 363d | 2025-02-14 | 2026-02-11 | KD-22 SS | 511d | 0d |  |
| KD-22 |  | Commencement of Construction of TRC | milestone | 0d | 2025-02-14 | 2025-02-14 |  | 0d |  | start on 2025-02-14 |
| A-1430 |  | TRC Concrete Lining & Structural Works |  | 361d | 2026-02-12 | 2027-02-07 | A-1420 | 511d | 586d |  |
|  | 3 | **Construction of Hydromechanical Works (LOT-3)** |  |  | 2026-07-21 | 2028-03-24 |  |  |  |  |
|  | 5.1 | **Gates** |  |  | 2026-07-21 | 2028-03-24 |  |  |  |  |
| A-1440 |  | Procure & Fabricate Gates |  | 307d | 2026-07-21 | 2027-05-23 | KD-23 SS | 100d | 0d |  |
| KD-23 |  | Commencement of Hydromechanical Works (Gates) | milestone | 0d | 2026-07-21 | 2026-07-21 |  | 0d |  | start on 2026-07-21 |
| A-1450 |  | Install Gates & Hoisting Equipment |  | 306d | 2027-05-24 | 2028-03-24 | A-1440 | 100d | 175d |  |
|  | 5.2 | **Penstock Pipe** |  |  | 2026-07-27 | 2027-01-02 |  |  |  |  |
| A-1460 |  | Procure & Deliver Penstock Pipe |  | 80d | 2026-07-27 | 2026-10-14 | KD-24 SS | 547d | 0d |  |
| KD-24 |  | Commencement of Construction of Penstock Pipe | milestone | 0d | 2026-07-27 | 2026-07-27 |  | 0d |  | start on 2026-07-27 |
| A-1470 |  | Install & Weld Penstock Pipe |  | 80d | 2026-10-15 | 2027-01-02 | A-1460 | 547d | 622d |  |
|  | 4 | **Construction of Electromechanical Works (LOT-4)** |  |  | 2026-12-04 | 2028-05-01 |  |  |  |  |
|  | 6.1 | **Electromechanical Works** |  |  | 2026-12-04 | 2028-05-01 |  |  |  |  |
| A-1480 |  | Procure Turbines & Generators |  | 258d | 2026-12-04 | 2027-08-18 | KD-25 SS | 62d | 0d |  |
| KD-25 |  | Commencement of Electromechanical Works | milestone | 0d | 2026-12-04 | 2026-12-04 |  | 62d | 0d | start on or after 2026-12-04 |
| A-1490 |  | Install Main Electromechanical Equipment |  | 257d | 2027-08-19 | 2028-05-01 | A-1480 | 62d | 137d |  |
|  | 5 | **Transmission Line Works (LOT-5)** |  |  | 2027-01-01 | 2027-11-08 |  |  |  |  |
|  | 7.1 | **Transmission Line Works** |  |  | 2027-01-01 | 2027-11-08 |  |  |  |  |
| A-1500 |  | Survey Route & Clear Right-of-Way |  | 105d | 2027-01-01 | 2027-04-15 | KD-26 SS | 237d | 0d |  |
| KD-26 |  | Commencement of Transmission Line Works | milestone | 0d | 2027-01-01 | 2027-01-01 |  | 237d | 0d | start on or after 2027-01-01 |
| A-1510 |  | Construct Tower Foundations |  | 103d | 2027-04-16 | 2027-07-27 | A-1500 | 237d | 0d |  |
| A-1520 |  | Erect Towers & String Conductors |  | 104d | 2027-07-28 | 2027-11-08 | A-1510 | 237d | 312d |  |

| ID | WBS | Activity | Type | Duration | Start | Finish | Predecessors | Total float | Free float | Constraint |
| --- | --- | --- | --- | --- | --- | --- | --- | --- | --- | --- |
|  | 6 | **Testing & Commissioning** |  |  | 2028-05-02 | 2028-07-01 |  |  |  |  |
|  | 8.1 | **System Testing & Commissioning** |  |  | 2028-05-02 | 2028-07-01 |  |  |  |  |
| A-1530 |  | Pre-commissioning Checks |  | 31d | 2028-05-02 | 2028-06-01 | KD-27 SS | 1d | 0d |  |
| KD-27 |  | Commencement of Construction of Penstock Pipe | milestone | 0d | 2028-05-02 | 2028-05-02 |  | 1d | 0d | start on or after 2028-05-02 |
| A-1540 |  | Wet & Dry Commissioning |  | 30d | 2028-06-02 | 2028-07-01 | A-1530 | 1d | 76d |  |
